# ProjM-MSProjetNeu

Schedule from MS Project, 2025-05-05 to 2026-02-06, costs in $, A marks actual dates.

## Calendars

- Standard: Mon-Fri 08:00-12:00, 13:00-17:00; Sat-Sun off.

## Resources

| Resource | Rate |
| --- | --- |
| Project Manager | 75 |
| Business Analyst | 45 |
| Risk Manager | 50 |
| Requirements Engineer | 45 |
| IT Architect | 65 |
| Database Specialist | 65 |
| UI/UX Designer | 45 |
| DevOps Engineer | 70 |
| Software Developer | 60 |
| Frontend Developer | 55 |
| Test Manager | 55 |
| QA Engineer | 45 |
| System Administrator | 60 |
| Developer | 60 |
| Technical Writer | 40 |
| Trainer | 45 |
| System Analyst | 50 |

## Schedule

| ID | WBS | Task | Type | Duration | Start | Finish | Predecessors | Complete | Total slack | Free slack | Resources | Work | Actual work | Cost | Actual cost |
| --- | --- | --- | --- | --- | --- | --- | --- | --- | --- | --- | --- | --- | --- | --- | --- |
| 1 | 1 | **Initiation & Planning** |  | 7d | 2025-05-05 A | 2025-05-13 A |  | 100% |  |  |  | 96h | 96h | 6,120 | 6,120 |
| 2 | 1.1 | Kick-off Meeting |  | 1d | 2025-05-05 A | 2025-05-05 A |  | 100% |  |  | Project Manager | 8h | 8h | 600 | 600 |
| 3 | 1.2 | Stakeholder Identification |  | 2d | 2025-05-06 A | 2025-05-07 A | 2 | 100% |  |  | Business Analyst | 16h | 16h | 720 | 720 |
| 4 | 1.3 | Define Project Scope & Objectives |  | 3d | 2025-05-06 A | 2025-05-08 A | 2 | 100% |  |  | Project Manager | 24h | 24h | 1,800 | 1,800 |
| 5 | 1.4 | Develop Project Charter |  | 3d | 2025-05-09 A | 2025-05-13 A | 4 | 100% |  |  | Project Manager | 24h | 24h | 1,800 | 1,800 |
| 6 | 1.5 | Initial Risk Assesment |  | 3d | 2025-05-09 A | 2025-05-13 A | 4 | 100% |  |  | Risk Manager | 24h | 24h | 1,200 | 1,200 |
| 7 | 1.6 | Project Chart Approved | milestone | 0d | 2025-05-13 A | 2025-05-13 A | 5 | 100% |  |  |  |  |  |  |  |
| 8 | 2 | **Requirements Analysis** |  | 9d | 2025-05-14 A | 2025-05-26 A | 1 | 100% |  |  |  | 72h | 72h | 3,240 | 3,240 |
| 9 | 2.1 | Conduct Stakeholder Interviews |  | 1d | 2025-05-14 A | 2025-05-14 A | 1 | 100% |  |  | Business Analyst | 8h | 8h | 360 | 360 |
| 10 | 2.2 | Define Functional Requirements |  | 5d | 2025-05-15 A | 2025-05-21 A | 9 | 100% |  |  | Requirements Engineer | 40h | 40h | 1,800 | 1,800 |
| 11 | 2.3 | Validate Requirements |  | 3d | 2025-05-22 A | 2025-05-26 A | 10 | 100% |  |  | Business Analyst | 24h | 24h | 1,080 | 1,080 |
| 12 | 2.4 | Requirements Finalized | milestone | 0d | 2025-05-26 A | 2025-05-26 A | 11 | 100% |  |  |  |  |  |  |  |
| 13 | 3 | **System design** |  | 9d | 2025-05-27 A | 2025-06-06 A | 8 | 100% |  |  |  | 96h | 96h | 5,920 | 5,920 |
| 14 | 3.1 | Design Architecture System (Backend, Frontend) |  | 4d | 2025-05-27 A | 2025-05-30 A | 12 | 100% |  |  | IT Architect | 32h | 32h | 2,080 | 2,080 |
| 15 | 3.2 | Database Design |  | 3d | 2025-06-02 A | 2025-06-04 A | 14 | 100% |  |  | Database Specialist | 24h | 24h | 1,560 | 1,560 |
| 16 | 3.3 | UI/UX Design |  | 3d | 2025-06-02 A | 2025-06-04 A | 14 | 100% |  |  | UI/UX Designer | 24h | 24h | 1,080 | 1,080 |
| 17 | 3.4 | Design Review |  | 2d | 2025-06-05 A | 2025-06-06 A | 15, 16 | 100% |  |  | Project Manager | 16h | 16h | 1,200 | 1,200 |
| 18 | 3.5 | Design Approved | milestone | 0d | 2025-06-06 A | 2025-06-06 A | 17 | 100% |  |  |  |  |  |  |  |
| 19 | 4 | **Development** |  | 120d | 2025-06-09 | 2025-11-21 | 18 |  | 0d |  |  | 1344h |  | 79,200 |  |
| 20 | 4.1 | **Sprint 1 SP:** |  | 24d | 2025-06-09 | 2025-07-10 |  |  | 0d |  |  | 424h |  | 25,440 |  |
| 21 | 4.1.1 | **US #: 1, 2, 3, 6, 20, 23, 27, 34, 35, 43** |  | 24d | 2025-06-09 | 2025-07-10 | 18 |  | 0d |  |  | 424h |  | 25,440 |  |
| 22 | 4.1.1.1 | Set Up Dev Environment |  | 3d | 2025-06-09 | 2025-06-11 | 18 |  | 0d |  | DevOps Engineer | 24h |  | 1,680 |  |
| 23 | 4.1.1.2 | Implement Student Registration& Login |  | 5d | 2025-06-12 | 2025-06-18 | 22 |  | 3d | 0d | Software Developer | 40h |  | 2,400 |  |
| 24 | 4.1.1.3 | Setup Role-based Dashboard Views |  | 3d | 2025-06-19 | 2025-06-23 | 23 |  | 3d | 0d | Frontend Developer | 24h |  | 1,320 |  |
| 25 | 4.1.1.4 | Build Profile Management (Student/Teachert/Admin) |  | 3d | 2025-06-24 | 2025-06-26 | 24 |  | 3d | 0d | Software Developer | 24h |  | 1,440 |  |
| 26 | 4.1.1.5 | Add Password Reset& Email Verification Workflow |  | 4d | 2025-06-27 | 2025-07-02 | 25 |  | 3d | 0d | Software Developer | 32h |  | 1,920 |  |
| 27 | 4.1.1.6 | Create Session Timeout& Logout Logic |  | 3d | 2025-07-03 | 2025-07-07 | 26 |  | 3d |  | Software Developer | 24h |  | 1,440 |  |
| 28 | 4.1.1.7 | Develop Course Management |  | 10d | 2025-06-12 | 2025-06-25 | 22 |  | 0d |  | Software Developer | 80h |  | 4,800 |  |
| 29 | 4.1.1.8 | Course Draft/Publish Toggle |  | 3d | 2025-06-26 | 2025-06-30 | 28 |  | 8d |  | Software Developer | 24h |  | 1,440 |  |
| 30 | 4.1.1.9 | Build Instructor Course Overview Page |  | 5d | 2025-06-26 | 2025-07-02 | 28 |  | 6d |  | Software Developer | 40h |  | 2,400 |  |
| 31 | 4.1.1.10 | Add Tags& Search Filters for Course Catalog |  | 3d | 2025-06-26 | 2025-06-30 | 28 |  | 8d |  | Frontend Developer | 24h |  | 1,320 |  |
| 32 | 4.1.1.11 | Implement Course Enrollment Workflow |  | 6d | 2025-06-26 | 2025-07-03 | 28 |  | 0d |  | Software Developer | 48h |  | 2,880 |  |
| 33 | 4.1.1.12 | Add Student Course Overview / My Schedule |  | 5d | 2025-07-04 | 2025-07-10 | 32 |  | 0d |  | Software Developer | 40h |  | 2,400 |  |
| 34 | 4.1.1.13 | Course Module Implemented | milestone | 0d | 2025-07-10 | 2025-07-10 | 33 |  | 0d |  |  |  |  |  |  |

| ID | WBS | Task | Type | Duration | Start | Finish | Predecessors | Total slack | Free slack | Resources | Work | Cost |
| --- | --- | --- | --- | --- | --- | --- | --- | --- | --- | --- | --- | --- |
| 35 | 4.2 | **Sprint 2 SP:** |  | 24d | 2025-07-11 | 2025-08-13 | 21 | 0d |  |  | 240h | 14,400 |
| 36 | 4.2.1 | **US #: 4, 5, 8, 17, 18, 19, 25, 28, 29, 32, 39, 40, 41, 44, 47** |  | 24d | 2025-07-11 | 2025-08-13 |  | 0d |  |  | 240h | 14,400 |
| 37 | 4.2.1.1 | Develop Learning Material Module |  | 12d | 2025-07-11 | 2025-07-28 | 21 | 0d |  | Software Developer | 96h | 5,760 |
| 38 | 4.2.1.2 | Implement Access Control for Materials |  | 5d | 2025-07-29 | 2025-08-04 | 37 | 0d |  |  |  |  |
| 39 | 4.2.1.3 | Add Media Upload |  | 2d | 2025-07-11 | 2025-07-14 | 34 | 20d | 0d | Software Developer | 16h | 960 |
| 40 | 4.2.1.4 | Add Restriction For Maximum MB Of Media Upload |  | 2d | 2025-08-05 | 2025-08-06 | 38 | 0d |  |  |  |  |
| 41 | 4.2.1.5 | Add File Storage System |  | 5d | 2025-08-07 | 2025-08-13 | 40 | 0d |  |  |  |  |
| 42 | 4.2.1.6 | Add Function To Set Submission Period |  | 2d | 2025-07-15 | 2025-07-16 | 39 | 20d |  | Software Developer | 16h | 960 |
| 43 | 4.2.1.7 | Add Media Download |  | 2d | 2025-07-11 | 2025-07-14 | 34 | 22d |  | Software Developer | 16h | 960 |
| 44 | 4.2.1.8 | Develop Waitlist & Notification System |  | 4d | 2025-07-11 | 2025-07-16 | 34 | 12d | 0d | Software Developer | 32h | 1,920 |
| 45 | 4.2.1.9 | Add Reminder& Notification Settings |  | 4d | 2025-07-17 | 2025-07-22 | 44 | 12d | 0d | Software Developer | 32h | 1,920 |
| 46 | 4.2.1.10 | Add Schedule& Calendar Sync |  | 4d | 2025-07-23 | 2025-07-28 | 45 | 12d | 0d | Software Developer | 32h | 1,920 |
| 47 | 4.2.1.11 | Learning Material Module Implemented | milestone | 0d | 2025-07-28 | 2025-07-28 | 46 | 12d |  |  |  |  |
| 48 | 4.3 | **Sprint 3 SP:** |  | 24d | 2025-08-14 | 2025-09-16 | 35 | 0d |  |  | 208h | 12,360 |
| 49 | 4.3.1 | **US #: 7, 9, 10, 11, 12, 21, 24, 26, 38, 42, 45, 48, 50** |  | 24d | 2025-08-14 | 2025-09-16 |  | 0d |  |  | 208h | 12,360 |
| 50 | 4.3.1.1 | Develop Exam Module |  | 9d | 2025-08-14 | 2025-08-26 | 47 | 0d |  | Software Developer | 72h | 4,320 |
| 51 | 4.3.1.2 | Quiz/Assessment Generator |  | 4d | 2025-08-27 | 2025-09-01 | 50 | 0d |  | Software Developer | 32h | 1,920 |
| 52 | 4.3.1.3 | Auto-Grading for Multiple Choice |  | 2d | 2025-09-02 | 2025-09-03 | 51 | 0d |  | Software Developer | 16h | 960 |
| 53 | 4.3.1.4 | Implement Progress Tracking |  | 2d | 2025-09-04 | 2025-09-05 | 52 | 0d |  | Software Developer | 16h | 960 |
| 54 | 4.3.1.5 | Add Function To Calculate Average Course Grade |  | 1d | 2025-09-08 | 2025-09-08 | 53 | 6d |  | Software Developer | 8h | 480 |
| 55 | 4.3.1.6 | Add Exam Timer& Auto-Submit |  | 1d | 2025-09-08 | 2025-09-08 | 53 | 0d |  | Software Developer | 8h | 480 |
| 56 | 4.3.1.7 | Teacher grading interface |  | 3d | 2025-09-09 | 2025-09-11 | 55 | 0d |  | Frontend Developer | 24h | 1,320 |
| 57 | 4.3.1.8 | Notification For Teacher For Late Submissions |  | 2d | 2025-09-12 | 2025-09-15 | 56 | 1d |  | Software Developer | 16h | 960 |
| 58 | 4.3.1.9 | Export Function For Exam Results |  | 1d | 2025-09-12 | 2025-09-12 | 56 | 2d | 0d | Software Developer | 8h | 480 |
| 59 | 4.3.1.10 | Export Function For Submissions |  | 1d | 2025-09-12 | 2025-09-12 | 56 | 0d |  | Software Developer | 8h | 480 |
| 60 | 4.3.1.11 | Add Feedback Function For Students For Courses |  | 2d | 2025-09-15 | 2025-09-16 | 59 | 0d |  |  |  |  |
| 61 | 4.3.1.12 | Add Feedback Function For Teachers For Submissions |  | 2d | 2025-09-15 | 2025-09-16 | 59 | 0d |  |  |  |  |
| 62 | 4.3.1.13 | Exam Module Implemented | milestone | 0d | 2025-09-12 | 2025-09-12 | 58 | 2d |  |  |  |  |

| ID | WBS | Task | Type | Duration | Start | Finish | Predecessors | Total slack | Resources | Work | Cost |
| --- | --- | --- | --- | --- | --- | --- | --- | --- | --- | --- | --- |
| 63 | 4.4 | **Sprint 4 SP:** |  | 24d | 2025-09-17 | 2025-10-20 | 48 | 0d |  | 208h | 12,480 |
| 64 | 4.4.1 | **US #: 13, 14, 15, 16, 30, 31, 36, 49** |  | 24d | 2025-09-17 | 2025-10-20 |  | 0d |  | 208h | 12,480 |
| 65 | 4.4.1.1 | Develop Communication Tools |  | 4d | 2025-09-17 | 2025-09-22 | 50 | 0d | Software Developer | 32h | 1,920 |
| 66 | 4.4.1.2 | Implement Messaging System |  | 4d | 2025-09-23 | 2025-09-26 | 65 | 0d | Software Developer | 32h | 1,920 |
| 67 | 4.4.1.3 | Forum/ Q&A Board |  | 2d | 2025-09-29 | 2025-09-30 | 66 | 0d | Software Developer | 16h | 960 |
| 68 | 4.4.1.4 | Admin panel |  | 2d | 2025-10-01 | 2025-10-02 | 67 | 0d | Software Developer | 16h | 960 |
| 69 | 4.4.1.5 | Dashboard with KPI's |  | 1d | 2025-10-03 | 2025-10-03 | 68 | 0d | Software Developer | 8h | 480 |
| 70 | 4.4.1.6 | Export of reports |  | 1d | 2025-10-06 | 2025-10-06 | 69 | 0d | Software Developer | 8h | 480 |
| 71 | 4.4.1.7 | Add Terms of Service& Privacy Consent Flow |  | 2d | 2025-10-07 | 2025-10-08 | 70 | 0d | Software Developer | 16h | 960 |
| 72 | 4.4.1.8 | Add Multi-Language Support (Start mit DE/EN) |  | 2d | 2025-10-09 | 2025-10-10 | 71 | 0d | Software Developer | 16h | 960 |
| 73 | 4.4.1.9 | Add Function To Report Inappropriate Content |  | 2d | 2025-10-13 | 2025-10-14 | 72 | 4d | Software Developer | 16h | 960 |
| 74 | 4.4.1.10 | Integrate All Modules |  | 6d | 2025-10-13 | 2025-10-20 | 21, 35, 48, 71, 72 | 0d | Software Developer | 48h | 2,880 |
| 75 | 4.4.1.11 | Communication Module Implemented | milestone | 0d | 2025-10-20 | 2025-10-20 | 74 | 0d |  |  |  |
| 76 | 4.5 | **Sprint 5 SP:** |  | 24d | 2025-10-21 | 2025-11-21 | 63 | 0d |  | 264h | 14,520 |
| 77 | 4.5.1 | **US #: 22, 33, 37, 46** |  | 24d | 2025-10-21 | 2025-11-21 |  | 0d |  | 264h | 14,520 |
| 78 | 4.5.1.1 | Implement responsive login/registration page |  | 2d | 2025-10-21 | 2025-10-22 | 75 | 0d | Frontend Developer | 16h | 880 |
| 79 | 4.5.1.2 | Implement role-based navigation menu (Student/Teacher/Admin) |  | 4d | 2025-10-23 | 2025-10-28 | 78 | 0d | Frontend Developer | 32h | 1,760 |
| 80 | 4.5.1.3 | Build reusable form components (inputs, dropdowns, validation) |  | 4d | 2025-10-29 | 2025-11-03 | 79 | 0d | Frontend Developer | 32h | 1,760 |
| 81 | 4.5.1.4 | Add user feedback (toast notifications, loading spinners) |  | 2d | 2025-11-04 | 2025-11-05 | 80 | 0d | Frontend Developer | 16h | 880 |
| 82 | 4.5.1.5 | Implement course detail view (description, dates, instructor) |  | 2d | 2025-11-06 | 2025-11-07 | 81 | 0d | Frontend Developer | 16h | 880 |
| 83 | 4.5.1.6 | Add real-time exam timer with warning indicators |  | 2d | 2025-11-06 | 2025-11-07 | 81 | 10d | Frontend Developer | 16h | 880 |
| 84 | 4.5.1.7 | Enable autosave& resume UI for ongoing assessments |  | 2d | 2025-11-10 | 2025-11-11 | 82 | 8d | Frontend Developer | 16h | 880 |
| 85 | 4.5.1.8 | Display exam results& performance charts (per question/topic) |  | 3d | 2025-11-10 | 2025-11-12 | 82 | 7d | Frontend Developer | 24h | 1,320 |
| 86 | 4.5.1.9 | Build chat interface (with thread, search, and roles) |  | 2d | 2025-11-10 | 2025-11-11 | 82 | 0d | Frontend Developer | 16h | 880 |
| 87 | 4.5.1.10 | Implement notification center (announcements, alerts) |  | 2d | 2025-11-12 | 2025-11-13 | 86 | 0d | Frontend Developer | 16h | 880 |
| 88 | 4.5.1.11 | Add mobile responsiveness (mediaqueries, flex/grid adjustments) |  | 2d | 2025-11-14 | 2025-11-17 | 87 | 4d | Frontend Developer | 16h | 880 |
| 89 | 4.5.1.12 | Implement dark/light mode toggle |  | 2d | 2025-11-14 | 2025-11-17 | 87 | 0d | Frontend Developer | 16h | 880 |
| 90 | 4.5.1.13 | Apply accessibility improvements (ARIA, tab nav, contrast checks) |  | 4d | 2025-11-18 | 2025-11-21 | 89 | 0d | Frontend Developer | 32h | 1,760 |
| 91 | 4.5.1.14 | UI Implemented | milestone | 0d | 2025-11-21 | 2025-11-21 | 90 | 0d |  |  |  |

| ID | WBS | Task | Type | Duration | Start | Finish | Predecessors | Total slack | Free slack | Resources | Work | Cost |
| --- | --- | --- | --- | --- | --- | --- | --- | --- | --- | --- | --- | --- |
| 92 | 5 | **Testing** |  | 18d | 2025-11-24 | 2025-12-17 |  | 0d |  |  | 192h | 9,040 |
| 93 | 5.1 | Write Test Plans & Cases |  | 3d | 2025-11-24 | 2025-11-26 | 76 | 0d |  | Test Manager | 24h | 1,320 |
| 94 | 5.2 | Conduct Unit Testing |  | 4d | 2025-11-27 | 2025-12-02 | 93 | 0d |  | QA Engineer | 32h | 1,440 |
| 95 | 5.3 | Conduct Integration Testing |  | 4d | 2025-12-03 | 2025-12-08 | 94 | 0d |  | QA Engineer | 32h | 1,440 |
| 96 | 5.4 | Perform Load & Stress Testing |  | 3d | 2025-12-09 | 2025-12-11 | 95 | 0d |  | QA Engineer | 24h | 1,080 |
| 97 | 5.5 | Conduct Cross-Browser & Device Testing |  | 4d | 2025-12-12 | 2025-12-17 | 96 | 0d |  | QA Engineer | 32h | 1,440 |
| 98 | 5.6 | Conduct User Acceptance Testing (UAT) |  | 4d | 2025-12-09 | 2025-12-12 | 95 | 1d | 0d | Business Analyst | 32h | 1,440 |
| 99 | 5.7 | Prepare Final Test Summary Report |  | 2d | 2025-12-15 | 2025-12-16 | 98 | 1d |  | Test Manager | 16h | 880 |
| 100 | 5.8 | Testing Passed | milestone | 0d | 2025-12-12 | 2025-12-12 | 98 | 3d |  |  |  |  |
| 101 | 6 | **Deployment & Rollout** |  | 12d | 2025-12-18 | 2026-01-02 | 92 | 0d |  |  | 136h | 8,800 |
| 102 | 6.1 | Set Up Rollback Plan in Case of Deployment Failure |  | 5d | 2025-12-18 | 2025-12-24 | 100 | 32d |  | System Administrator | 40h | 2,400 |
| 103 | 6.2 | Prepare Production Environment |  | 2d | 2025-12-18 | 2025-12-19 | 100 | 0d |  | System Administrator | 16h | 960 |
| 104 | 6.3 | Initial Deployment (Pilot) |  | 3d | 2025-12-22 | 2025-12-24 | 103 | 0d |  | DevOps Engineer | 24h | 1,680 |
| 105 | 6.4 | Gather Pilot Feedback & Fix Bugs |  | 3d | 2025-12-25 | 2025-12-29 | 104 | 0d |  | Developer | 24h | 1,440 |
| 106 | 6.5 | Notify Stakeholders & Users About Go-Live |  | 2d | 2025-12-30 | 2025-12-31 | 105 | 0d |  | Project Manager | 16h | 1,200 |
| 107 | 6.6 | Full Deployment (Go-Live) |  | 2d | 2026-01-01 | 2026-01-02 | 106 | 0d |  | DevOps Engineer | 16h | 1,120 |
| 108 | 6.7 | Full Deployment Completed | milestone | 0d | 2026-01-02 | 2026-01-02 | 107 | 0d |  |  |  |  |
| 109 | 7 | **Training & Documentation** |  | 17d | 2025-12-30 | 2026-01-21 | 105 | 0d |  |  | 152h | 6,720 |
| 110 | 7.1 | Write User Manuals |  | 3d | 2025-12-30 | 2026-01-01 | 105 | 11d | 0d | Technical Writer | 24h | 960 |
| 111 | 7.2 | Record Tutorial Videos for Key Features |  | 9d | 2026-01-05 | 2026-01-15 | 108 | 0d |  | Trainer | 72h | 3,240 |
| 112 | 7.3 | Prepare Training Materials |  | 3d | 2026-01-02 | 2026-01-06 | 110 | 11d |  | Trainer | 24h | 1,080 |
| 113 | 7.4 | Conduct Training Sessions |  | 4d | 2026-01-16 | 2026-01-21 | 111 | 0d |  | Trainer | 32h | 1,440 |
| 114 | 7.5 | Training Completed | milestone | 0d | 2026-01-21 | 2026-01-21 | 113 | 0d |  |  |  |  |
| 115 | 8 | **Maintenance & Evaluation** |  | 12d | 2026-01-22 | 2026-02-06 | 109 | 0d |  |  | 120h | 7,400 |
| 116 | 8.1 | Set Up Support & Monitoring |  | 2d | 2026-01-22 | 2026-01-23 | 108 | 0d |  | System Analyst | 16h | 800 |
| 117 | 8.2 | Review System Logs & Anomaly Reports Regularly |  | 3d | 2026-01-22 | 2026-01-26 | 114 | 9d |  | System Analyst | 24h | 1,200 |
| 118 | 8.3 | Collect User Feedback |  | 5d | 2026-01-26 | 2026-01-30 | 116 | 0d |  | Project Manager | 40h | 3,000 |
| 119 | 8.4 | Create Evaluation Report (User Stats, Issues, Recommendations) |  | 3d | 2026-02-02 | 2026-02-04 | 118 | 0d |  | System Analyst | 24h | 1,200 |
| 120 | 8.5 | Organize Evaluation Meeting with Key Stakeholders |  | 2d | 2026-02-05 | 2026-02-06 | 119 | 0d |  | Project Manager | 16h | 1,200 |
| 121 | 8.6 | Evaluation Completed | milestone | 0d | 2026-02-04 | 2026-02-04 | 119 | 2d |  |  |  |  |
